# 项目1t

Schedule from MS Project, 2014-01-01 to 2014-05-07, A marks actual dates.

## Calendars

- 标准: Mon-Fri 08:00-12:00, 13:00-17:00; Sat-Sun off.

## Resources

| Resource |
| --- |
| 周庆 |
| 韩翔 |
| 韩翔 |
| 开发人员 |
| 测试人员 |
| 讲师 |
| 技术联络人员 |
| 部署小组 |

## Schedule

| ID | WBS | Task | Type | Duration | Start | Finish | Predecessors | Complete | Remaining | Total slack | Free slack | Constraint | Resources | Work | Actual work |
| --- | --- | --- | --- | --- | --- | --- | --- | --- | --- | --- | --- | --- | --- | --- | --- |
| 1 | 1 | **软件开发** |  | 91d | 2014-01-01 A | 2014-05-07 |  | 14% | 78.2d |  |  |  |  | 1228h | 144h |
| 2 | 1.1 | **项目范围规划** |  | 5d | 2014-01-01 A | 2014-01-07 A |  | 100% |  |  |  |  |  | 40h | 40h |
| 3 | 1.1.1 | 确定项目范围 |  | 4h | 2014-01-01 A | 2014-01-01 A |  | 100% |  |  |  |  | 周庆 | 4h | 4h |
| 4 | 1.1.2 | 获得项目所需资金 |  | 1d | 2014-01-01 A | 2014-01-02 A | 3 | 100% |  |  |  |  | 周庆 | 8h | 8h |
| 5 | 1.1.3 | 定义预备资源 |  | 1d | 2014-01-02 A | 2014-01-03 A | 4 | 100% |  |  |  |  | 周庆 | 8h | 8h |
| 6 | 1.1.4 | 获得核心资源 |  | 2.5d | 2014-01-03 A | 2014-01-07 A | 5 | 100% |  |  |  | finish no earlier than 2014-01-07 | 周庆 | 20h | 20h |
| 7 | 1.1.5 | 完成项目范围规划 | milestone | 0d | 2014-01-07 A | 2014-01-07 A | 6 | 100% |  |  |  |  | 周庆 |  |  |
| 8 | 1.2 | **分析/软件需求** |  | 15d | 2014-01-06 A | 2014-01-27 A |  | 100% |  |  |  |  |  | 68h | 68h |
| 9 | 1.2.1 | 行为需求分析 |  | 6d | 2014-01-06 A | 2014-01-13 A |  | 100% |  |  |  | start no earlier than 2014-01-05 | 韩翔 | 48h | 48h |
| 10 | 1.2.2 | 起草初步的软件规范 |  | 1.5d | 2014-01-14 A | 2014-01-15 A | 9 | 100% |  |  |  |  | 韩翔 | 12h | 12h |
| 11 | 1.2.3 | 制定交付期限 |  | 1d | 2014-01-08 A | 2014-01-08 A |  | 100% |  |  |  | start no earlier than 2014-01-08 | 周庆 | 8h | 8h |
| 12 | 1.2.4 | 完成分析工作 | milestone | 0d | 2014-01-27 A | 2014-01-27 A |  | 100% |  |  |  | start no earlier than 2014-01-27 | 周庆 |  |  |
| 13 | 1.3 | **设计** |  | 20d | 2014-01-27 A | 2014-02-21 |  | 31% | 13.79d |  |  |  |  | 120h | 36h |
| 14 | 1.3.1 | 审阅初步的软件规范 |  | 2d | 2014-01-27 A | 2014-01-28 A | 12 | 100% |  |  |  |  | 韩翔 | 16h | 16h |
| 15 | 1.3.2 | 制定功能规范 |  | 5d | 2014-01-29 A | 2014-02-04 | 14 | 50% | 2.5d | 66d |  |  | 韩翔 | 40h | 20h |
| 16 | 1.3.3 | 根据功能规范开发原型 |  | 4d | 2014-02-12 | 2014-02-17 |  |  |  | 0.25d | 0d | start no earlier than 2014-02-12 | 韩翔 | 32h |  |
| 17 | 1.3.4 | 审阅功能规范 |  | 2d | 2014-02-18 | 2014-02-19 | 16 |  |  | 0.25d | 0d |  | 周庆 | 16h |  |
| 18 | 1.3.5 | 根据反馈修改功能规范 |  | 1d | 2014-02-20 | 2014-02-20 | 17 |  |  | 0.25d | 0d |  | 周庆 | 8h |  |
| 19 | 1.3.6 | 获得开展后续工作的批准 |  | 4h | 2014-02-21 | 2014-02-21 | 18 |  |  | 0.25d | 0d |  | 周庆; 韩翔 | 8h |  |
| 20 | 1.3.7 | 完成设计工作 | milestone | 0d | 2014-02-21 | 2014-02-21 | 19 |  |  | 0.25d | 0d |  |  |  |  |
| 21 | 1.4 | **开发** |  | 29d | 2014-02-21 | 2014-04-03 |  |  |  | 0.25d |  |  |  | 520h |  |
| 22 | 1.4.1 | 搭建开发环境 |  | 2d | 2014-02-21 | 2014-02-25 | 20 |  |  | 0.25d | 0d |  | 开发人员 | 16h |  |
| 23 | 1.4.2 | 确定模块化/分层设计参数 |  | 1d | 2014-02-25 | 2014-02-26 | 22 |  |  | 0.25d | 0d |  | 韩翔 | 8h |  |
| 24 | 1.4.3 | 分派任务给开发人员 |  | 1d | 2014-02-26 | 2014-02-27 | 23 |  |  | 0.25d | 0d |  | 开发人员; 韩翔 | 16h |  |
| 25 | 1.4.4 | 编写代码 |  | 25d | 2014-02-27 | 2014-04-03 | 24 |  |  | 0.25d | 0d |  | 开发人员; 韩翔 | 400h |  |
| 26 | 1.4.5 | 开发人员测试(初步调试) |  | 10d | 2014-03-07 | 2014-03-21 | 25FS-7.5% |  |  | 0.25d | 0d |  | 开发人员 | 80h |  |
| 27 | 1.4.6 | 完成开发工作 | milestone | 0d | 2014-03-21 | 2014-03-21 | 26 |  |  | 0.25d | 0d |  |  |  |  |

| ID | WBS | Task | Type | Duration | Start | Finish | Predecessors | Total slack | Free slack | Constraint | Resources | Work |
| --- | --- | --- | --- | --- | --- | --- | --- | --- | --- | --- | --- | --- |
| 28 | 1.5 | **测试** |  | 21d | 2014-03-21 | 2014-04-21 |  | 0.25d |  |  |  | 168h |
| 29 | 1.5.1 | **单元测试** |  | 12d | 2014-03-21 | 2014-04-08 |  | 0.25d |  |  |  | 96h |
| 30 | 1.5.1.1 | 审阅模块化代码 |  | 2d | 2014-03-21 | 2014-03-25 | 27 | 0.25d | 0d |  | 测试人员 | 16h |
| 31 | 1.5.1.2 | 测试组件模块是否符合产品规范 |  | 2d | 2014-03-25 | 2014-03-27 | 27, 30 | 0.25d | 0d |  | 测试人员 | 16h |
| 32 | 1.5.1.3 | 找出不符合产品规范的异常情况 |  | 3d | 2014-03-27 | 2014-04-01 | 31 | 0.25d | 0d |  | 测试人员 | 24h |
| 33 | 1.5.1.4 | 修改代码 |  | 3d | 2014-04-01 | 2014-04-04 | 32 | 0.25d | 0d |  | 测试人员 | 24h |
| 34 | 1.5.1.5 | 重新测试经过修改的代码 |  | 2d | 2014-04-04 | 2014-04-08 | 33 | 0.25d | 0d |  | 测试人员 | 16h |
| 35 | 1.5.1.6 | 完成单元测试 | milestone | 0d | 2014-04-08 | 2014-04-08 | 34 | 0.25d | 0d |  |  |  |
| 36 | 1.5.2 | **整体测试** |  | 9d | 2014-04-08 | 2014-04-21 |  | 0.25d |  |  |  | 72h |
| 37 | 1.5.2.1 | 测试模块集成情况 |  | 2d | 2014-04-08 | 2014-04-10 | 35 | 0.25d | 0d |  | 测试人员 | 16h |
| 38 | 1.5.2.2 | 找出不符合规范的异常情况 |  | 2d | 2014-04-10 | 2014-04-14 | 37 | 0.25d | 0d |  | 测试人员 | 16h |
| 39 | 1.5.2.3 | 修改代码 |  | 3d | 2014-04-14 | 2014-04-17 | 38 | 0.25d | 0d |  | 测试人员 | 24h |
| 40 | 1.5.2.4 | 重新测试经过修改的代码 |  | 2d | 2014-04-17 | 2014-04-21 | 39 | 0.25d | 0d |  | 测试人员 | 16h |
| 41 | 1.5.2.5 | 完成整体测试 | milestone | 0d | 2014-04-21 | 2014-04-21 | 40 | 0.25d | 0d |  |  |  |
| 42 | 1.6 | **培训** |  | 65d | 2014-01-01 | 2014-04-01 |  | 26d |  |  |  | 24h |
| 43 | 1.6.1 | 编写培训材料 |  | 1d | 2014-04-01 | 2014-04-01 |  | 26d |  | finish no earlier than 2014-04-01 | 讲师 | 8h |
| 44 | 1.6.2 | 对客户培训 |  | 2d | 2014-01-01 | 2014-01-02 |  | 77d | 0d |  | 讲师 | 16h |
| 45 | 1.6.3 | 完成培训材料 | milestone | 0d | 2014-01-02 | 2014-01-02 | 44 | 77d | 76.75d |  |  |  |
| 46 | 1.7 | **文档** |  | 64d | 2014-01-15 | 2014-04-14 |  | 17d |  |  |  | 184h |
| 47 | 1.7.1 | 需求设计文档 |  | 8d | 2014-01-15 | 2014-01-24 |  | 69d | 12d | finish no earlier than 2014-01-24 | 韩翔 | 64h |
| 48 | 1.7.2 | 软件设计文档 |  | 4d | 2014-02-12 | 2014-02-17 | 47 | 57d |  | finish no earlier than 2014-02-17 | 韩翔 | 32h |
| 49 | 1.7.3 | 制定用户手册规范 |  | 2d | 2014-03-31 | 2014-04-01 |  | 5d | 0d | finish no earlier than 2014-04-01 | 技术联络人员 | 16h |
| 50 | 1.7.4 | 编写用户手册 |  | 5d | 2014-04-02 | 2014-04-08 | 49 | 5d | 0d | start no earlier than 2014-04-02 | 技术联络人员 | 40h |
| 51 | 1.7.5 | 审阅所有的用户文档 |  | 2d | 2014-04-09 | 2014-04-10 | 50 | 5d | 0d |  | 技术联络人员 | 16h |
| 52 | 1.7.6 | 根据反馈修改用户文档 |  | 2d | 2014-04-11 | 2014-04-14 | 51 | 5d | 0d |  | 技术联络人员 | 16h |
| 53 | 1.7.7 | 完成文档 | milestone | 0d | 2014-04-14 | 2014-04-14 | 52 | 5d | 4.75d |  |  |  |

| ID | WBS | Task | Type | Duration | Start | Finish | Predecessors | Total slack | Free slack | Resources | Work |
| --- | --- | --- | --- | --- | --- | --- | --- | --- | --- | --- | --- |
| 54 | 1.8 | **试生产** |  | 67.75d | 2014-01-27 | 2014-04-30 |  | 0.25d |  |  | 64h |
| 55 | 1.8.1 | 确定测试群体 |  | 1d | 2014-01-27 | 2014-01-27 | 12 | 59d | 0d | 韩翔 | 8h |
| 56 | 1.8.2 | 确定软件分发机制 |  | 1d | 2014-01-28 | 2014-01-28 | 55 | 59d | 58.75d |  |  |
| 57 | 1.8.3 | 安装/部署软件 |  | 1d | 2014-04-21 | 2014-04-22 | 41, 45, 53, 56 | 0.25d | 0d | 部署小组 | 8h |
| 58 | 1.8.4 | 获得用户反馈 |  | 1w | 2014-04-22 | 2014-04-29 | 57 | 0.25d | 0d | 部署小组 | 40h |
| 59 | 1.8.5 | 评估测试信息 |  | 1d | 2014-04-29 | 2014-04-30 | 58 | 0.25d | 0d | 部署小组 | 8h |
| 60 | 1.8.6 | 完成试生产工作 | milestone | 0d | 2014-04-30 | 2014-04-30 | 59 | 0.25d | 0d |  |  |
| 61 | 1.9 | **部署** |  | 5d | 2014-04-30 | 2014-05-07 |  | 0.25d |  |  | 40h |
| 62 | 1.9.1 | 确定最终部署策略 |  | 1d | 2014-04-30 | 2014-05-01 | 60 | 0.25d | 0d | 部署小组 | 8h |
| 63 | 1.9.2 | 确定部署方法 |  | 1d | 2014-05-01 | 2014-05-02 | 62 | 0.25d | 0d | 部署小组 | 8h |
| 64 | 1.9.3 | 获得部署所需资源 |  | 1d | 2014-05-02 | 2014-05-05 | 63 | 0.25d | 0d | 部署小组 | 8h |
| 65 | 1.9.4 | 培训技术支持人员 |  | 1d | 2014-05-05 | 2014-05-06 | 64 | 0.25d | 0d | 部署小组 | 8h |
| 66 | 1.9.5 | 部署软件 |  | 1d | 2014-05-06 | 2014-05-07 | 65 | 0.25d | 0d | 部署小组 | 8h |
| 67 | 1.9.6 | 完成部署工作 | milestone | 0d | 2014-05-07 | 2014-05-07 | 66 | 0.25d |  |  |  |
